# 生产预警及进度

Schedule from a web Gantt chart, 2023-10-13 to 2023-12-07.
Saturdays and Sundays are off

## Schedule

| ID | WBS | Task | Duration | Start | Finish | Predecessors | inPeople | Status |
| --- | --- | --- | --- | --- | --- | --- | --- | --- |
| 2 | 1 | **后台逻辑计算** | 6d | 2023-10-13 | 2023-10-20 |  | 张睿龙 |  |
| 3 | 1.1 | 各种方案不同时间的计算 | 3d | 2023-10-13 | 2023-10-17 |  |  |  |
| 4 | 1.2 | 加入预警工程流程任务 | 3d | 2023-10-18 | 2023-10-20 | 3 |  | waiting |
| 5 | 2 | **需求一（生产预警及进度处理）** | 13d | 2023-10-23 | 2023-11-08 |  | 张睿龙、鹏程 |  |
| 6 | 2.1 | 基因合成生产数据管理 | 3d | 2023-10-23 | 2023-10-25 | 4 |  | waiting |
| 7 | 2.2 | 基因合成延期工单管理 | 3d | 2023-10-26 | 2023-10-30 | 6 |  | waiting |
| 8 | 2.3 | 基因工单延期详情 | 3d | 2023-10-31 | 2023-11-02 | 7 |  | waiting |
| 9 | 2.4 | 关系图谱查看页 | 2d | 2023-11-03 | 2023-11-06 | 8 |  | waiting |
| 10 | 2.5 | 基因合成工单管理V1 | 2d | 2023-11-07 | 2023-11-08 | 9 |  | waiting |
| 11 | 3 | **需求二（客户邮件及延期预警邮件发送处理）** | 7d | 2023-11-09 | 2023-11-17 |  | 张睿龙、鹏程 |  |
| 12 | 3.1 | 基因延期邮件发送 | 3d | 2023-11-09 | 2023-11-13 | 5 |  | waiting |
| 13 | 3.2 | 每周二基因进度邮件发送 | 2d | 2023-11-14 | 2023-11-15 | 12 |  | waiting |
| 14 | 3.3 | 基因客户沟通邮件设置 | 2d | 2023-11-16 | 2023-11-17 | 13 |  | waiting |
| 15 | 4 | 需求三（销售app可查看基因订单预计完成时间） | 2d | 2023-11-20 | 2023-11-21 | 11 | 张睿龙、鹏程 | waiting |
| 16 | 5 | [测试]需求一 | 15d | 2023-11-09 | 2023-11-29 | 5 | 雷叶青 | waiting |
| 17 | 6 | [测试]需求二 | 3d | 2023-11-30 | 2023-12-04 | 16 | 雷叶青 | waiting |
| 18 | 7 | [测试]需求三 | 1d | 2023-12-05 | 2023-12-05 | 17 | 雷叶青 | waiting |
| 19 | 8 | 【全量测试】 | 2d | 2023-12-06 | 2023-12-07 | 18 | 雷叶青 | waiting |
